Schedule from MS Project, 2016-03-02 to 2016-04-15.
Microsoft

## Calendars

- 标准: Mon-Fri 08:00-12:00, 13:00-17:00; Sat-Sun off.

## Resources

| Resource |
| --- |
| 王敏 |
| 徐磊 |
| 金志新 |
| 徐东旭 |
| 魏战朋 |
| 新人 |
| 杨慧 |
| 胡悦 |
| 张钰 |
| 洛基 |
| 郭吉珍 |

## Schedule

| ID | WBS | Task | Type | Duration | Start | Finish | Predecessors | Total slack | Free slack | Constraint | Resources | Work |
| --- | --- | --- | --- | --- | --- | --- | --- | --- | --- | --- | --- | --- |
| 1 | 1 | **R5E 促销活动** |  | 33d | 2016-03-02 | 2016-04-15 |  |  |  |  |  | 1488h |
| 2 | 1.1 | **准备工作** |  | 10d | 2016-03-02 | 2016-03-16 |  | 12.88d |  |  |  | 696h |
| 3 | 1.1.1 | 门店基础信息格式确认和数据提供 |  | 3d | 2016-03-02 | 2016-03-07 |  | 29.88d |  |  | 张钰 | 24h |
| 4 | 1.1.2 | 30000个手机号码和短信内容确认 |  | 8d | 2016-03-02 | 2016-03-14 |  | 24.88d |  |  | 张钰 | 64h |
| 5 | 1.1.3 | 可参与活动产品范围圈定 |  | 8d | 2016-03-02 | 2016-03-14 |  | 12.88d | 0d |  | 张钰 | 64h |
| 6 | 1.1.4 | 微信公众平台资料准备 |  | 8d | 2016-03-02 | 2016-03-14 |  | 24.88d |  |  | 金志新 | 64h |
| 7 | 1.1.5 | 微信公众账号高级接口申请 |  | 8d | 2016-03-02 | 2016-03-14 |  | 24.88d |  |  | 金志新 | 64h |
| 8 | 1.1.6 | 红包账户充值 |  | 10d | 2016-03-02 | 2016-03-16 |  | 22.88d |  |  | 张钰 | 80h |
| 9 | 1.1.7 | 欧飞充值平台账户充值 |  | 10d | 2016-03-02 | 2016-03-16 |  | 22.88d |  |  | 张钰 | 80h |
| 10 | 1.1.8 | 短信特服号确定 |  | 8d | 2016-03-02 | 2016-03-14 |  | 24.88d |  |  | 张钰 | 64h |
| 11 | 1.1.9 | 活动流程确认 |  | 8d | 2016-03-02 | 2016-03-14 |  | 24.88d |  |  | 张钰 | 64h |
| 12 | 1.1.10 | 转发内容确认 |  | 8d | 2016-03-02 | 2016-03-14 |  | 24.88d |  |  |  |  |
| 13 | 1.1.11 | 短域名申请 |  | 8d | 2016-03-02 | 2016-03-14 |  | 23.88d | 0d | finish no earlier than 2016-03-11 | 金志新 | 64h |
| 14 | 1.1.12 | 短信签名申请和确认 |  | 8d | 2016-03-02 | 2016-03-14 |  | 24.88d |  |  | 张钰 | 64h |
| 15 | 1.2 | **设计** |  | 7d | 2016-03-02 | 2016-03-11 |  | 10.88d |  |  |  | 192h |
| 16 | 1.2.1 | 接口设计和表结构及数据设计 |  | 3d | 2016-03-07 | 2016-03-09 |  | 20d | 7.12d | finish no earlier than 2016-03-09 | 金志新 | 24h |
| 17 | 1.2.2 | UI原型设计和确认 |  | 7d | 2016-03-02 | 2016-03-11 |  | 10.88d | 1d |  | 胡悦; 金志新; 张钰 | 168h |
| 18 | 1.3 | **开发** |  | 14d | 2016-03-14 | 2016-03-31 |  |  |  |  |  | 456h |
| 19 | 1.3.1 | 海报二维码提供 |  | 1d | 2016-03-14 | 2016-03-15 | 13 | 23.88d |  |  | 金志新 | 8h |
| 20 | 1.3.2 | 新防伪查询平台信息抽取组配置 | manual | 1d | 2016-03-15 | 2016-03-16 | 5 |  |  |  | 郭吉珍 | 8h |
| 21 | 1.3.3 | 门店数据编号后发送客户 | manual | 1d | 2016-03-15 | 2016-03-16 | 19 |  |  |  | 金志新 | 8h |
| 22 | 1.3.4 | **微信平台部分** |  | 17.88d | 2016-03-02 | 2016-03-25 |  | 0d |  |  |  | 104h |
| 23 | 1.3.4.1 | 微信高级接口申请 | manual | 8d | 2016-03-02 | 2016-03-11 |  |  |  |  | 魏战朋 | 64h |
| 24 | 1.3.4.2 | 红包发放接口开通对接 | manual | 5d | 2016-03-21 | 2016-03-25 |  |  |  |  | 洛基 | 40h |

Notes:
- 4: 1、 批零短信发送 / 2、活动参与特服号确认 / 3、短信验证码 / 4、充值成功短信推送提醒
- 6: 确认是否采用中商公众号发送红包

| ID | WBS | Task | Type | Duration | Start | Finish | Predecessors | Total slack | Free slack | Resources | Work |
| --- | --- | --- | --- | --- | --- | --- | --- | --- | --- | --- | --- |
| 25 | 1.3.5 | **活动参与H5部分** |  | 12d | 2016-03-14 | 2016-03-30 |  | 9.88d |  |  | 96h |
| 26 | 1.3.5.1 | 活动介绍页面 |  | 2d | 2016-03-14 | 2016-03-16 | 17 | 9.88d | 0d | 魏战朋 | 16h |
| 27 | 1.3.5.2 | 注册页面 |  | 2d | 2016-03-16 | 2016-03-18 | 26 | 9.88d | 0d | 魏战朋 | 16h |
| 28 | 1.3.5.3 | 扫码页面 |  | 2d | 2016-03-18 | 2016-03-22 | 27 | 9.88d | 0d | 魏战朋 | 16h |
| 29 | 1.3.5.4 | 抽奖结果 |  | 3d | 2016-03-22 | 2016-03-25 | 28 | 9.88d | 0d | 魏战朋 | 24h |
| 30 | 1.3.5.5 | 分享 |  | 3d | 2016-03-25 | 2016-03-30 | 29 | 9.88d | 0d | 魏战朋 | 24h |
| 31 | 1.3.6 | **短信平台** |  | 5d | 2016-03-21 | 2016-03-28 | 16 | 12.88d |  |  | 40h |
| 32 | 1.3.6.1 | 短信DLL组件对接抽奖接口 |  | 5d | 2016-03-21 | 2016-03-28 | 34 | 12.88d | 0d | 徐磊 | 40h |
| 33 | 1.3.7 | **接口** |  | 10d | 2016-03-14 | 2016-03-28 |  | 12.88d |  |  | 80h |
| 34 | 1.3.7.1 | 抽奖活动参与接口 |  | 5d | 2016-03-14 | 2016-03-21 | 5 | 12.88d | 0d | 金志新 | 40h |
| 35 | 1.3.7.2 | 红包发送接口和对接 |  | 2d | 2016-03-21 | 2016-03-23 | 34 | 14.88d | 0d | 金志新 | 16h |
| 36 | 1.3.7.3 | 检测手机是否参与接口 |  | 1d | 2016-03-23 | 2016-03-24 | 35 | 14.88d | 0d | 金志新 | 8h |
| 37 | 1.3.7.4 | 短信发送接口对接 |  | 1d | 2016-03-24 | 2016-03-25 | 36 | 14.88d | 0d | 金志新 | 8h |
| 38 | 1.3.7.5 | 手机短信验证码验证接口对接 |  | 1d | 2016-03-25 | 2016-03-28 | 37 | 14.88d |  | 金志新 | 8h |
| 39 | 1.3.8 | **后台** |  | 15d | 2016-03-07 | 2016-03-25 |  |  |  |  | 104h |
| 40 | 1.3.8.1 | 抽奖管理维护 | manual | 3d | 2016-03-07 | 2016-03-10 |  |  |  | 新人 | 24h |
| 41 | 1.3.8.2 | 红包管理维护 | manual | 3d | 2016-03-10 | 2016-03-15 | 40 |  |  | 新人 | 24h |
| 42 | 1.3.8.3 | 门店基础信息维护 | manual | 2d | 2016-03-15 | 2016-03-17 | 41 |  |  | 新人 | 16h |
| 43 | 1.3.8.4 | **报表** |  | 14d | 2016-03-07 | 2016-03-25 |  | 13d |  |  | 40h |
| 44 | 1.3.8.4.1 | 活动转发点击明细 |  | 1d | 2016-03-17 | 2016-03-18 | 42 | 12.88d | 0d | 新人 | 8h |
| 45 | 1.3.8.4.2 | 活动参与报表 |  | 1d | 2016-03-18 | 2016-03-21 | 44 | 12.88d | 0d | 新人 | 8h |
| 46 | 1.3.8.4.3 | 活动转发购买率 | inactive | 1d | 2016-03-21 | 2016-03-22 | 45 | 12.88d | 0d | 新人 | 8h |
| 47 | 1.3.8.4.4 | 当天话费活动预警 |  | 1d | 2016-03-07 | 2016-03-08 | 46 | 23.88d | 0d | 新人 | 8h |
| 48 | 1.3.8.4.5 | 当天分享情况预警 |  | 1d | 2016-03-08 | 2016-03-09 | 47 | 23.88d | 0d | 新人 | 8h |
| 49 | 1.3.8.4.6 | 红包发送明细 | manual | 1d | 2016-03-24 | 2016-03-25 | 48 |  |  | 新人 | 8h |

| ID | WBS | Task | Type | Duration | Start | Finish | Predecessors | Total slack | Constraint | Resources | Work |
| --- | --- | --- | --- | --- | --- | --- | --- | --- | --- | --- | --- |
| 50 | 1.3.9 | **欧飞充值平台** |  | 1d | 2016-03-28 | 2016-03-29 | 32 | 13.88d |  |  | 8h |
| 51 | 1.3.9.1 | 欧飞充值平台充值程序 |  | 1d | 2016-03-28 | 2016-03-29 |  | 13.88d |  | 金志新 | 8h |
| 52 | 1.4 | **测试** |  | 20d | 2016-03-07 | 2016-04-04 |  | 0d |  |  | 112h |
| 53 | 1.4.1 | 测试用例编写 | manual | 5d | 2016-03-07 | 2016-03-11 |  |  |  | 杨慧 | 40h |
| 54 | 1.4.2 | H5页面活动参与流程测试 |  | 3d | 2016-03-30 | 2016-04-04 | 30 | 9.88d |  | 杨慧 | 24h |
| 55 | 1.4.3 | 短信参与流程测试 |  | 2d | 2016-03-28 | 2016-03-30 | 32 | 12.88d |  | 杨慧 | 16h |
| 56 | 1.4.4 | 后台整体测试 |  | 4d | 2016-03-09 | 2016-03-15 | 48 | 23.88d | finish no earlier than 2015-02-03 | 杨慧 | 32h |
| 57 | 1.5 | **上线** |  | 1d | 2016-04-08 | 2016-04-11 |  |  |  |  | 16h |
| 58 | 1.5.1 | 系统发布 | manual | 1d | 2016-04-08 | 2016-04-08 |  |  |  | 金志新 | 8h |
| 59 | 1.5.2 | 30000条批量短信发送 | manual | 1d | 2016-04-08 | 2016-04-11 |  |  |  | 金志新 | 8h |
| 60 | 1.6 | **KT** |  | 2d | 2016-04-11 | 2016-04-12 |  |  |  |  | 16h |
| 61 | 1.6.1 | 活动参与流程培训 | manual | 1d | 2016-04-11 | 2016-04-11 | 58 |  |  | 杨慧 | 8h |
| 62 | 1.6.2 | 后台培训 | manual | 1d | 2016-04-12 | 2016-04-12 | 61 |  |  | 杨慧 | 8h |
